# Harbour Pointe Assisted Living Center

Schedule from Primavera P6, 2010-09-01 to 2014-09-24, data date 2011-05-01, costs in USD, A marks actual dates.
Recently past strucutral and traffic inspection. No weather delays in the / past month allowed us to pull in finish date by a week. We successfully / accomplsihed some work that had risk identified. The risks did not occur / and we can now release 100k in contingency funds. / Owner is happy with progress and completed a walk through during the / month. They do anticipate a few changes, primarily around the curbing and / the reception area.

## Calendars

- Trades - 5 Day Workweek: Mon-Fri 08:00-12:00, 13:00-17:00; Sat-Sun off. Exceptions (off unless hours are given): 2010-09-06, 2010-11-25, 2010-12-24, 2010-12-31, 2011-05-30, 2011-07-04, 2011-09-05, 2011-11-24, 2011-12-26, 2012-01-02, 2012-05-28, 2012-07-04, 2012-09-03, 2012-11-22, 2012-12-25, 2013-01-01, 2013-05-27, 2013-07-04, 2013-09-02, 2013-11-28, 2013-12-25.

## Resources

| Resource | Group | Rate |
| --- | --- | --- |
| Thermal Protection Subcontractor | labor | 120 |
| Painter | labor | 70 |
| Finishes & Fit-out Subcontractor | labor | 55 |
| Floor and Carpet Layer | labor | 45 |
| Plumber | labor | 55 |
| Electrician | labor | 95 |
| HVAC | labor | 44 |
| FF&E Specialties | labor | 54 |
| Drywall Subcontractor | labor | 45 |
| Conveying Subcontractor | labor | 80 |
| Rough Carpenter | labor | 45 |
| Finish Carpenter | labor | 67 |
| Millwork Subcontractor | labor | 70 |
| Pool Installation Subcontractor | labor | 105 |
| Concrete Foundation Subcontractor | labor | 100 |
| Laborer-Construction | labor | 35 |
| Roofing Subcontractor | labor | 75 |
| Specialty Metal Fabricator Subcontractor | labor | 110 |
| Project Managers | labor | 50 |
| Fire Suppression Subcontractor | labor | 85 |
| Glass & Glazing Subcontractor | labor | 87 |
| Landscaping Subcontractor | labor | 40 |
| Utilities Subcontractor | labor | 105 |
| Paving & Roadways Subcontractor | labor | 130 |

## Schedule

| ID | WBS | Activity | Type | Duration | Start | Finish | Predecessors | Complete | Remaining | Planned start | Planned finish | Total float | Free float | Resources | Cost | Actual cost | Key Milestones | Department | Responsibility | Phase |
| --- | --- | --- | --- | --- | --- | --- | --- | --- | --- | --- | --- | --- | --- | --- | --- | --- | --- | --- | --- | --- |
| EC1010 |  | Building Pad Delivered by Owner | milestone | 0d | 2010-09-01 A | 2010-09-01 A |  | 100% |  |  |  |  |  |  |  |  | Key MS | ENG | FOLEY | DESGN |
| EC2430 |  | Substantial Completion - All TCO | milestone | 0d | 2014-09-24 | 2014-09-24 | EC1600, EC1200, EC1270, EC1130, EC2440, EC2390, EC2420, EC2180 |  |  |  |  | 0d |  |  |  |  | Key MS | CON | MILLS | FINSH |
|  | 1 | **Building 1** |  |  | 2010-09-01 | 2014-09-24 |  |  |  |  |  |  |  |  |  |  |  |  |  |  |
| EC2440 |  | Complete Building 1 | milestone | 0d | 2014-09-24 | 2014-09-24 | EC1780, EC1950, EC2250 FF, EC1910, EC2370, EC2140, EC1630, EC1670, EC1850, EC2400, EC2360, EC1700, EC1790, EC2270, EC2260, EC2240, EC1990, EC2080, EC2290, EC1550 |  |  |  |  | 0d |  |  |  |  | Key MS | CON | MILLS | FINSH |
|  | 1 | **Structure** |  |  | 2010-09-01 | 2011-09-21 |  |  |  |  |  |  |  |  |  |  |  |  |  |  |
| EC1090 |  | Building Pad Including UG Utils |  | 60d | 2010-09-01 A | 2010-11-23 A | EC1110 FF | 100% |  | 2010-09-01 | 2010-11-26 |  |  | Concrete Foundation Subcontractor [480 h] | 48,000 | 49,500 |  | CON | NOLAN | FOUND |
| EC1140 |  | First Floor Masonry Structure |  | 15d | 2010-11-24 A | 2010-12-13 A | EC1090 | 100% |  | 2010-11-24 | 2010-12-15 |  |  | Laborer-Construction [120 h] | 4,200 | 4,410 |  | CON | NOLAN | FOUND |
| EC1170 |  | Second Floor Slab & Collar Beam |  | 30d | 2010-12-15 A | 2011-01-31 A | EC1140 | 100% |  | 2010-12-15 | 2011-01-27 |  |  | Laborer-Construction [240 h] | 8,400 | 10,850 |  | CON | NOLAN | FOUND |
| EC1190 |  | Second Floor Masonry Structure |  | 15d | 2011-01-26 A | 2011-02-22 A | EC1170 | 100% |  | 2011-01-26 | 2011-02-15 |  |  | Laborer-Construction [120 h] | 4,200 | 5,005 |  | ENG | HARIS | FOUND |
| EC1210 |  | Third Floor Slab & Collar Beam |  | 30d | 2011-02-23 A | 2011-04-07 A | EC1190 | 100% |  | 2011-02-22 | 2011-04-04 |  |  | Laborer-Construction [240 h] | 8,400 | 9,275 |  | ENG | NOLAN | FOUND |
| EC1240 |  | Third Floor Masonry Structure |  | 15d | 2011-04-12 A | 2011-05-05 | EC1210 | 90% | 3.33d | 2011-04-14 | 2011-05-05 | 0d |  | Laborer-Construction [120 h] | 4,200 | 3,535 |  | ENG | FOLEY | FOUND |
| EC1250 |  | Fourth Floor Slab & Collar Beam |  | 30d | 2011-05-05 | 2011-06-17 | EC1240 |  |  |  |  | 0d |  | Laborer-Construction [240 h] | 8,400 |  |  | ENG | FOLEY | FOUND |
| EC1300 |  | Fourth Floor Masonry Structure |  | 15d | 2011-06-17 | 2011-07-11 | EC1250 |  |  |  |  | 0d |  | Laborer-Construction [120 h] | 4,200 |  |  | ENG | FOLEY | FOUND |
| EC1310 |  | Roof Slab |  | 30d | 2011-07-11 | 2011-08-22 | EC1300 |  |  |  |  | 0d |  | Laborer-Construction [240 h] | 8,400 |  |  | CON | FOLEY | FOUND |
| EC1340 |  | Stair and Elevator Masonry Structure |  | 6d | 2011-08-22 | 2011-08-30 | EC1310 |  |  |  |  | 0d |  | Laborer-Construction [48 h] | 1,680 |  |  | CON | EVANS | FOUND |
| EC1350 |  | Roof Slab/Collar Beam |  | 15d | 2011-08-30 | 2011-09-21 | EC1340 |  |  |  |  | 0d |  | Laborer-Construction [120 h] | 4,200 |  |  | CON | EVANS | FOUND |
|  | 2 | **Roof** |  |  | 2011-09-21 | 2012-01-25 |  |  |  |  |  |  |  |  |  |  |  |  |  |  |
| EC1390 |  | Place Roof Trusses and Sheathing |  | 30d | 2011-09-21 | 2011-11-02 | EC1350 |  |  |  |  | 110d | 0d | Roofing Subcontractor [240 h]; Specialty Metal Fabricator Subcontractor [240 h] | 44,400 |  |  | CON | EVANS | STRUC |
| EC1400 |  | Place Mechanical Equipment Supports |  | 30d | 2011-09-21 | 2011-11-02 | EC1350 |  |  |  |  | 338d | 0d | Roofing Subcontractor [240 h] | 18,000 |  |  | CON | EVANS | STRUC |
| EC1530 |  | Built-Up Asphalt Roofing |  | 42d | 2011-11-02 | 2012-01-04 | EC1400 |  |  |  |  | 338d | 0d | Roofing Subcontractor [336 h] | 25,200 |  |  | ENG | EVANS | STRUC |
| EC1540 |  | Felt and Tile Roofing |  | 57d | 2011-11-02 | 2012-01-25 | EC1390 |  |  |  |  | 110d | 0d | Roofing Subcontractor [456 h] | 34,200 |  |  | ENG | EVANS | STRUC |
| EC1780 |  | Roof Complete | milestone | 0d | 2012-01-25 | 2012-01-25 | EC1540, EC1530, EC1010 |  |  |  |  | 497d | 0d |  |  |  | Key MS | CON | EVANS | STRUC |
|  | 3 | **Envelope** |  |  | 2011-08-30 | 2012-08-03 |  |  |  |  |  |  |  |  |  |  |  |  |  |  |
| EC1360 |  | Mobilize Scaffolding |  | 15d | 2011-08-30 | 2011-09-21 | EC1350 SS |  |  |  |  | 44d | 20d | Thermal Protection Subcontractor [120 h] | 14,400 |  |  | CON | EVANS | CLOSE |
| EC1410 |  | Install Exterior Windows and Sliding Glass Doors Floor 1 |  | 24d | 2011-09-21 | 2011-10-25 | EC1350 |  |  |  |  | 0d |  | Thermal Protection Subcontractor [192 h] | 23,040 |  |  | CON | EVANS | CLOSE |
| EC1470 |  | Install Exterior Windows and Sliding Glass Doors Floor 2 |  | 24d | 2011-10-18 | 2011-11-21 | EC1410 FS-5d |  |  |  |  | 0d |  | Thermal Protection Subcontractor [192 h] | 23,040 |  |  | ENG | EVANS | CLOSE |
| EC1490 |  | Install Backing & Cauld Windows Floor1 |  | 12d | 2011-10-19 | 2011-11-04 | EC1360, EC1410 FS-4d |  |  |  |  | 24d | 7d | Thermal Protection Subcontractor [96 h] | 11,520 |  |  | CON | EVANS | CLOSE |
| EC1500 |  | Install Exterior Windows and Sliding Glass Doors Floor 3 |  | 21d | 2011-11-14 | 2011-12-14 | EC1470 FS-5d |  |  |  |  | 0d |  | Thermal Protection Subcontractor [168 h] | 20,160 |  |  | ENG | EVANS | CLOSE |
| EC1510 |  | Install Backing & Cauld Windows Floor 2 |  | 12d | 2011-11-15 | 2011-12-02 | EC1470 FS-4d, EC1490 |  |  |  |  | 17d | 4d | Thermal Protection Subcontractor [96 h] | 11,520 |  |  | CON | EVANS | CLOSE |
| EC1520 |  | Install Exterior Windows and Sliding Glass Doors Floor 4 |  | 27d | 2011-12-07 | 2012-01-17 | EC1500 FS-5d |  |  |  |  | 0d |  | Thermal Protection Subcontractor [216 h] | 25,920 |  |  | ENG | EVANS | CLOSE |
| EC1570 |  | Install Backing & Cauld Windows Floor 3 |  | 9d | 2011-12-08 | 2011-12-21 | EC1500 FS-4d, EC1510 |  |  |  |  | 13d |  | Thermal Protection Subcontractor [72 h] | 8,640 |  |  | CON | EVANS | CLOSE |
| EC1650 |  | Install Backing & Cauld Windows Floor 4 |  | 12d | 2012-01-11 | 2012-01-27 | EC1520 FS-4d, EC1570 |  |  |  |  | 0d |  | Thermal Protection Subcontractor [96 h] | 11,520 |  |  | CON | EVANS | CLOSE |
| EC1580 |  | Stucco Bands |  | 12d | 2012-01-13 | 2012-01-31 | EC1510, EC1650 FS-10d |  |  |  |  | 0d |  | Thermal Protection Subcontractor [96 h] | 11,520 |  |  | ENG | EVANS | CLOSE |
| EC1660 |  | Stucco Grey |  | 24d | 2012-01-31 | 2012-03-05 | EC1580 |  |  |  |  | 0d |  | Thermal Protection Subcontractor [192 h] | 23,040 |  |  | CON | EVANS | CLOSE |
| EC1690 |  | Stucco Finish Coat |  | 30d | 2012-03-05 | 2012-04-16 | EC1660 |  |  |  |  | 0d |  | Thermal Protection Subcontractor [240 h] | 28,800 |  |  | CON | EVANS | CLOSE |
| EC1840 |  | Caulk |  | 12d | 2012-04-16 | 2012-05-02 | EC1690 |  |  |  |  | 0d |  | Thermal Protection Subcontractor [96 h] | 11,520 |  |  | CON | HARIS | CLOSE |
| EC1900 |  | Stucco Band Trim |  | 15d | 2012-05-02 | 2012-05-23 | EC1840 |  |  |  |  | 0d |  | Thermal Protection Subcontractor [120 h] | 14,400 |  |  | CON | HARIS | CLOSE |
| EC1980 |  | Paint Exterior |  | 15d | 2012-05-31 | 2012-06-21 | EC1900 FS+5d |  |  |  |  | 0d |  | Painter [120 h] | 8,400 |  |  | CON | HARIS | CLOSE |
| EC1990 |  | Install Railings |  | 45d | 2012-05-31 | 2012-08-03 | EC1980 SS |  |  |  |  | 189d | 0d | Thermal Protection Subcontractor [360 h] | 43,200 |  |  | CON | HARIS | CLOSE |
| EC2110 |  | Demobilize Scaffolding |  | 15d | 2012-06-21 | 2012-07-13 | EC1980 |  |  |  |  | 0d |  | Thermal Protection Subcontractor [120 h] | 14,400 |  |  | CON | HARIS | CLOSE |
| EC2140 |  | Shell Complete | milestone | 0d | 2012-08-03 | 2012-08-03 | EC2110, EC1990 |  |  |  |  | 189d | 14.64d |  |  |  | Key MS | CON | HARIS | CLOSE |

| ID | WBS | Activity | Type | Duration | Start | Finish | Predecessors | Complete | Remaining | Planned start | Planned finish | Total float | Free float | Resources | Cost | Actual cost | Department | Responsibility | Phase | Key Milestones |
| --- | --- | --- | --- | --- | --- | --- | --- | --- | --- | --- | --- | --- | --- | --- | --- | --- | --- | --- | --- | --- |
|  | 4 | **Interior Finishes** |  |  | 2011-11-02 | 2013-06-03 |  |  |  |  |  |  |  |  |  |  |  |  |  |  |
| EC1550 |  | Unit Finishes Building North - Floor 1 |  | 246d | 2011-11-02 | 2012-10-19 | EC1540 SS, EC1530 SS |  |  |  |  | 338d | 0d | Finishes & Fit-out Subcontractor [109.09 h]; Rough Carpenter [109.09 h]; Finish Carpenter [109.09 h]; Millwork Subcontractor [109.09 h]; Floor and Carpet Layer [109.09 h]; Plumber [109.09 h]; Electrician [109.09 h]; HVAC [109.09 h]; FF&E Specialties [109.09 h]; Painter [36 h]; Drywall Subcontractor [109.09 h] | 65,247.27 |  | ENG | EVANS | FINSH |  |
| EC1630 |  | Unit Finishes Building South - Floor 1 |  | 249d | 2011-11-09 | 2012-10-31 | EC1550 SS+5d |  |  |  |  | 338d | 0d | Finishes & Fit-out Subcontractor [109.09 h]; Rough Carpenter [109.09 h]; Finish Carpenter [109.09 h]; Millwork Subcontractor [109.09 h]; Floor and Carpet Layer [109.09 h]; Plumber [109.09 h]; Electrician [109.09 h]; HVAC [109.09 h]; FF&E Specialties [109.09 h]; Painter [36 h]; Drywall Subcontractor [109.09 h] | 65,247.27 |  | CON | EVANS | FINSH |  |
| EC1670 |  | Unit Finishes Building North - Floor 2 |  | 249d | 2011-11-16 | 2012-11-07 | EC1630 SS+5d |  |  |  |  | 412d | 0d | Finishes & Fit-out Subcontractor [109.09 h]; Rough Carpenter [109.09 h]; Finish Carpenter [109.09 h]; Millwork Subcontractor [109.09 h]; Floor and Carpet Layer [109.09 h]; Plumber [109.09 h]; Electrician [109.09 h]; HVAC [109.09 h]; FF&E Specialties [109.09 h]; Painter [36 h]; Drywall Subcontractor [109.09 h] | 65,247.27 |  | CON | EVANS | FINSH |  |
| EC1700 |  | Unit Finishes Building South - Floor 2 |  | 249d | 2011-11-23 | 2012-11-14 | EC1670 SS+5d |  |  |  |  | 412d | 0d | Finishes & Fit-out Subcontractor [109.09 h]; Rough Carpenter [109.09 h]; Finish Carpenter [109.09 h]; Millwork Subcontractor [109.09 h]; Floor and Carpet Layer [109.09 h]; Plumber [109.09 h]; Electrician [109.09 h]; HVAC [109.09 h]; FF&E Specialties [109.09 h]; Painter [36 h]; Drywall Subcontractor [109.09 h] | 65,247.27 |  | CON | EVANS | FINSH |  |
| EC1790 |  | Unit Finishes Building North - Floor 3 |  | 249d | 2011-12-01 | 2012-11-21 | EC1700 SS+5d, EC1820 FF+40d |  |  |  |  | 412d | 0d | Finishes & Fit-out Subcontractor [109.09 h]; Rough Carpenter [109.09 h]; Finish Carpenter [109.09 h]; Millwork Subcontractor [109.09 h]; Floor and Carpet Layer [109.09 h]; Plumber [109.09 h]; Electrician [109.09 h]; HVAC [109.09 h]; FF&E Specialties [109.09 h]; Painter [36 h]; Drywall Subcontractor [109.09 h] | 65,247.27 |  | CON | EVANS | FINSH |  |
| EC1850 |  | Unit Finishes Building South - Floor 3 |  | 249d | 2011-12-08 | 2012-11-29 | EC1790 SS+5d |  |  |  |  | 412d | 0d | Finishes & Fit-out Subcontractor [109.09 h]; Rough Carpenter [109.09 h]; Finish Carpenter [109.09 h]; Millwork Subcontractor [109.09 h]; Floor and Carpet Layer [109.09 h]; Plumber [109.09 h]; Electrician [109.09 h]; HVAC [109.09 h]; FF&E Specialties [109.09 h]; Painter [36 h]; Drywall Subcontractor [109.09 h] | 65,247.27 |  | CON | HARIS | FINSH |  |
| EC1910 |  | Unit Finishes Building North - Floor 4 |  | 252d | 2011-12-15 | 2012-12-11 | EC1850 SS+5d |  |  |  |  | 412d | 0d | Finishes & Fit-out Subcontractor [109.09 h]; Rough Carpenter [109.09 h]; Finish Carpenter [109.09 h]; Millwork Subcontractor [109.09 h]; Floor and Carpet Layer [109.09 h]; Plumber [109.09 h]; Electrician [109.09 h]; HVAC [109.09 h]; FF&E Specialties [109.09 h]; Painter [36 h]; Drywall Subcontractor [109.09 h] | 65,247.27 |  | CON | HARIS | FINSH |  |
| EC1950 |  | Unit Finishes Building South - Floor 4 |  | 252d | 2011-12-22 | 2012-12-18 | EC1910 SS+5d |  |  |  |  | 412d | 74d | Finishes & Fit-out Subcontractor [109.09 h]; Rough Carpenter [109.09 h]; Finish Carpenter [109.09 h]; Millwork Subcontractor [109.09 h]; Floor and Carpet Layer [109.09 h]; Plumber [109.09 h]; Electrician [109.09 h]; HVAC [109.09 h]; FF&E Specialties [109.09 h]; Painter [36 h]; Drywall Subcontractor [109.09 h] | 65,247.27 |  | CON | HARIS | FINSH |  |
| EC1820 |  | Building 2 Elevators Complete |  | 87d | 2012-01-25 | 2012-05-25 | EC1550 SS, EC1440 FF+15d, EC1780 |  |  |  |  | 497d | 85d | Conveying Subcontractor [480 h]; Electrician [480 h] | 84,000 |  | CON | HARIS | FINSH |  |
| EC2240 |  | Tenant Finishes for Clubhouse Areas |  | 159d | 2012-10-17 | 2013-06-03 | EC1630 FS-10d |  |  |  |  | 338d | 0d | Finishes & Fit-out Subcontractor [300 h]; Floor and Carpet Layer [300 h]; Plumber [300 h]; Electrician [300 h]; HVAC [300 h]; FF&E Specialties [300 h]; Painter [100 h]; Drywall Subcontractor [300 h] | 124,900 |  | CON | MILLS | FINSH |  |
| EC2370 |  | Final Inspections and Punchlist |  | 42d | 2013-04-03 | 2013-06-03 | EC2240 FF, EC1630, EC1550, EC1790, EC1670, EC1850, EC1700, EC1910, EC1950 |  |  |  |  | 338d |  | Finishes & Fit-out Subcontractor [90 h]; Floor and Carpet Layer [90 h]; Plumber [90 h]; Electrician [90 h]; HVAC [90 h]; FF&E Specialties [90 h]; Painter [30 h]; Drywall Subcontractor [90 h] | 39,570 |  | CON | MILLS | FINSH |  |
|  | 5 | **Pool & Courtyard** |  |  | 2012-06-28 | 2013-05-09 |  |  |  |  |  |  |  |  |  |  |  |  |  |  |
| EC2080 |  | Pool & Deck |  | 177d | 2012-06-28 | 2013-03-11 | EC2110 FS-10d, EC1540 |  |  |  |  | 0d |  | Pool Installation Subcontractor [840 h] | 88,200 |  | CON | HARIS | FINSH |  |
| EC2270 |  | Pergola and Amenities |  | 63d | 2013-02-11 | 2013-05-09 | EC2080 FS-20d |  |  |  |  | 0d |  | Pool Installation Subcontractor [504 h] | 52,920 |  | ENG | MILLS | FINSH |  |
|  | 2 | **Building 2** |  |  | 2010-09-29 | 2013-07-31 |  |  |  |  |  |  |  |  |  |  |  |  |  |  |
| EC2420 |  | Complete Building 2 | milestone | 0d | 2013-07-31 | 2013-07-31 | EC2340, EC2150, EC2200, EC2330, EC2030, EC2070, EC2120, EC2170, EC2210, EC2410 |  |  | 2013-08-01 | 2013-08-01 | 296.36d |  |  |  |  | CON | MILLS | FINSH | Key MS |
|  | 1 | **Structure** |  |  | 2010-09-29 | 2011-10-25 |  |  |  |  |  |  |  |  |  |  |  |  |  |  |
| EC1150 |  | Building Slab Incl. UG Utils |  | 60d | 2010-09-29 A | 2010-12-27 A | EC1090 SS+20d | 100% |  | 2010-09-29 | 2010-12-23 |  |  | Concrete Foundation Subcontractor [480 h]; Project Managers [480 h] | 72,000 | 72,750 | CON | NOLAN | FOUND |  |
| EC1220 |  | First Floor Masonry Structure |  | 15d | 2010-12-22 A | 2011-01-18 A | EC1150 | 100% |  | 2010-12-22 | 2011-01-13 |  |  | Laborer-Construction [120 h] | 4,200 | 5,600 | ENG | NOLAN | FOUND |  |
| EC1230 |  | Second Floor Slab & Collar Beam |  | 30d | 2011-01-12 A | 2011-02-25 A | EC1220 | 100% |  | 2011-01-12 | 2011-02-22 |  |  | Laborer-Construction [240 h] | 8,400 | 9,170 | ENG | NOLAN | FOUND |  |
| EC1260 |  | Second Floor Masonry Structure |  | 15d | 2011-02-23 A | 2011-03-22 A | EC1230 | 100% |  | 2011-03-01 | 2011-03-21 |  |  | Laborer-Construction [120 h] | 4,200 | 4,375 | ENG | NOLAN | FOUND |  |
| EC1290 |  | Third Floor Slab & Collar Beam |  | 30d | 2011-03-22 A | 2011-05-02 | EC1260 | 92% | 0.98d | 2011-03-22 | 2011-05-03 | 174.36d | 0d | Laborer-Construction [240 h] | 8,400 | 7,525 | ENG | FOLEY | FOUND |  |
| EC1320 |  | Third Floor Masonry Structure |  | 15d | 2011-05-02 | 2011-05-23 | EC1290 |  |  | 2011-05-03 | 2011-05-23 | 174.36d | 0d | Laborer-Construction [120 h] | 8,400 |  | CON | FOLEY | FOUND |  |
| EC1330 |  | Fourth Floor Slab & Collar Beam |  | 30d | 2011-05-23 | 2011-07-06 | EC1320 |  |  | 2011-05-24 | 2011-07-06 | 174.36d | 0d | Laborer-Construction [240 h] | 16,800 |  | CON | FOLEY | FOUND |  |
| EC1380 |  | Fourth Floor Masonry Structure |  | 15d | 2011-07-06 | 2011-07-27 | EC1330 |  |  | 2011-07-07 | 2011-07-27 | 174.36d | 0d | Laborer-Construction [120 h] | 8,400 |  | CON | EVANS | FOUND |  |
| EC1480 |  | Roof Slab |  | 27d | 2011-07-27 | 2011-09-02 | EC1380 |  |  | 2011-07-28 | 2011-09-02 | 174.36d | 0d | Laborer-Construction [216 h] | 15,120 |  | ENG | EVANS | FOUND |  |
| EC1620 |  | Stair and Elevator Masonry Structure |  | 6d | 2011-09-02 | 2011-09-13 | EC1480 |  |  | 2011-09-06 | 2011-09-13 | 174.36d | 0d | Laborer-Construction [48 h] | 3,360 |  | CON | EVANS | FOUND |  |
| EC1640 |  | Roof Slab/Collar Beam |  | 30d | 2011-09-13 | 2011-10-25 | EC1620 |  |  | 2011-09-14 | 2011-10-25 | 174.36d | 0d | Laborer-Construction [240 h] | 16,800 |  | CON | EVANS | FOUND |  |

Notes:
- EC1670: Steps: Install Plumbing Risers; Sprinkler Rough In; Layout and Top Rack; Electrical Rough In; Interior Rough and Finishes; HVAC Duct Rough In; HVAC Rough Inspection; Frame Walls & Soffits & Prehang; Install Plumbing In Walls; Electrical Wiring; Plumbing Rough Inspection; Electrical Rough Inspection; Framing Inspection; Install Insulation & Drywall One Side; Install Drywall 2nd Side; Finish Drywall (Bead, Tape, Knockdown Texture); Cut Plugs & Switches; Install Interior Door Frames; Interior Trim & Millwork; Paint; Install Cabinet Carcasss; Tile Kitchen, Foyer & Baths; Install Kit Plumbing Fixtures; Install Bath Mirrors & Enclosures; Install Bath Harware & Accessories; Finish Kitchen & Bath Plumbing; Paint 2nd Coat; Finish Plumbing Inspection; Install HVAC Unit & Startup; Carpet Units; Install Interior Doors; Install Security Finishes; Touch Up Drywall; Install Appliances; Touch Up Paint; Punchlist

| ID | WBS | Activity | Type | Duration | Start | Finish | Predecessors | Planned start | Planned finish | Total float | Free float | Resources | Cost | Department | Responsibility | Phase | Key Milestones |
| --- | --- | --- | --- | --- | --- | --- | --- | --- | --- | --- | --- | --- | --- | --- | --- | --- | --- |
|  | 2 | **Roof** |  |  | 2011-10-25 | 2012-02-28 |  |  |  |  |  |  |  |  |  |  |  |
| EC1710 |  | Place Roof Trusses and Sheathing |  | 30d | 2011-10-25 | 2011-12-07 | EC1640 | 2011-10-26 | 2011-12-07 | 174.36d | 0d | Roofing Subcontractor [240 h]; Specialty Metal Fabricator Subcontractor [240 h] | 88,800 | CON | EVANS | ROUGH |  |
| EC1720 |  | Place Mechanical Equipment Supports |  | 30d | 2011-10-25 | 2011-12-07 | EC1640 | 2011-10-26 | 2011-12-07 | 189.36d | 0d | Roofing Subcontractor [240 h] | 36,000 | CON | EVANS | ROUGH |  |
| EC1860 |  | Built-Up Asphalt Roofing |  | 42d | 2011-12-07 | 2012-02-07 | EC1720 |  |  | 189.36d | 10d | Roofing Subcontractor [336 h] | 25,200 | CON | HARIS | ROUGH |  |
| EC1870 |  | Felt and Tile Roofing |  | 57d | 2011-12-07 | 2012-02-28 | EC1710 |  |  | 174.36d | 0d | Roofing Subcontractor [456 h] | 34,200 | CON | HARIS | ROUGH |  |
| EC2020 |  | Roof Complete | milestone | 0d | 2012-02-28 | 2012-02-28 | EC1870, EC1150 SF, EC1860 |  |  | 174.36d | 0d |  |  | CON | HARIS | ROUGH | Key MS |
|  | 3 | **Envelope** |  |  | 2011-10-25 | 2012-12-28 |  |  |  |  |  |  |  |  |  |  |  |
| EC1730 |  | Install Exterior Windows and Sliding Glass Doors Floor 1 |  | 30d | 2011-10-25 | 2011-12-07 | EC1640 | 2011-10-26 | 2011-12-07 | 332.36d | 0d | Thermal Protection Subcontractor [240 h]; Glass & Glazing Subcontractor [240 h] | 99,360 | CON | EVANS | CLOSE |  |
| EC1740 |  | Mobilize Scaffolding |  | 15d | 2011-10-25 | 2011-11-15 | EC1640 | 2011-10-26 | 2011-11-15 | 370.36d | 11d | Thermal Protection Subcontractor [120 h] | 28,800 | CON | EVANS | CLOSE |  |
| EC1800 |  | Install Exterior Windows and Sliding Glass Doors Floor 2 |  | 27d | 2011-11-30 | 2012-01-10 | EC1730 FS-5d |  |  | 332.36d | 0d | Thermal Protection Subcontractor [216 h]; Glass & Glazing Subcontractor [216 h] | 44,712 | CON | EVANS | CLOSE |  |
| EC1830 |  | Install Backing & Cauld Windows Floor1 |  | 15d | 2011-12-01 | 2011-12-22 | EC1730 FS-4d, EC1740 |  |  | 359.36d | 7d | Thermal Protection Subcontractor [120 h] | 14,400 | CON | HARIS | CLOSE |  |
| EC1880 |  | Install Exterior Windows and Sliding Glass Doors Floor 3 |  | 27d | 2012-01-03 | 2012-02-09 | EC1800 FS-5d |  |  | 332.36d | 0d | Thermal Protection Subcontractor [216 h]; Glass & Glazing Subcontractor [216 h] | 44,712 | CON | HARIS | CLOSE |  |
| EC1890 |  | Install Backing & Cauld Windows Floor 2 |  | 12d | 2012-01-04 | 2012-01-20 | EC1800 FS-4d, EC1830 |  |  | 352.36d | 10d | Thermal Protection Subcontractor [96 h] | 11,520 | CON | HARIS | CLOSE |  |
| EC1920 |  | Install Exterior Windows and Sliding Glass Doors Floor 4 |  | 30d | 2012-02-02 | 2012-03-15 | EC1880 FS-5d |  |  | 332.36d | 0d | Thermal Protection Subcontractor [240 h]; Glass & Glazing Subcontractor [240 h] | 49,680 | CON | HARIS | CLOSE |  |
| EC1930 |  | Install Backing & Cauld Windows Floor 3 |  | 15d | 2012-02-03 | 2012-02-24 | EC1890, EC1880 FS-4d |  |  | 342.36d | 10d | Thermal Protection Subcontractor [120 h] | 14,400 | CON | HARIS | CLOSE |  |
| EC1960 |  | Install Backing & Cauld Windows Floor 4 |  | 15d | 2012-03-09 | 2012-03-30 | EC1920 FS-4d, EC1930 |  |  | 332.36d | 0d | Thermal Protection Subcontractor [120 h] | 14,400 | CON | HARIS | CLOSE |  |
| EC1940 |  | Stucco Bands |  | 15d | 2012-03-16 | 2012-04-06 | EC1890, EC1960 FS-10d | 2012-03-19 | 2012-04-06 | 332.36d | 0d | Thermal Protection Subcontractor [120 h] | 28,800 | CON | HARIS | CLOSE |  |
| EC1970 |  | Stucco Grey |  | 30d | 2012-04-06 | 2012-05-18 | EC1940 | 2012-04-09 | 2012-05-18 | 332.36d | 0d | Thermal Protection Subcontractor [240 h] | 57,600 | CON | HARIS | CLOSE |  |
| EC2050 |  | Stucco Finish Coat |  | 30d | 2012-05-18 | 2012-07-02 | EC1970 | 2012-05-21 | 2012-07-02 | 332.36d | 0d | Thermal Protection Subcontractor [240 h] | 57,600 | CON | HARIS | CLOSE |  |
| EC2130 |  | Caulk |  | 15d | 2012-07-02 | 2012-07-24 | EC2050 | 2012-07-03 | 2012-07-24 | 332.36d | 0d | Thermal Protection Subcontractor [120 h] | 28,800 | CON | HARIS | CLOSE |  |
| EC2160 |  | Stucco Band Trim |  | 30d | 2012-07-24 | 2012-09-05 | EC2130 | 2012-07-25 | 2012-09-05 | 332.36d | 0d | Thermal Protection Subcontractor [240 h] | 57,600 | CON | HARIS | CLOSE |  |
| EC2220 |  | Paint Exterior |  | 60d | 2012-09-12 | 2012-12-06 | EC2160 FS+5d | 2012-09-13 | 2012-12-06 | 332.36d | 0d | Thermal Protection Subcontractor [480 h] | 115,200 | CON | MILLS | CLOSE |  |
| EC2230 |  | Install Railings |  | 45d | 2012-09-12 | 2012-11-14 | EC2220 SS | 2012-09-13 | 2012-11-14 | 377.36d | 30d | Thermal Protection Subcontractor [360 h] | 86,400 | CON | MILLS | CLOSE |  |
| EC2300 |  | Demobilize Scaffolding |  | 15d | 2012-12-06 | 2012-12-28 | EC2220 |  |  | 332.36d | 0d | Thermal Protection Subcontractor [120 h] | 14,400 | CON | MILLS | CLOSE |  |
| EC2320 |  | Shell Complete | milestone | 0d | 2012-12-28 | 2012-12-28 | EC2300, EC2230 |  |  | 347.36d | 0d |  |  | CON | MILLS | CLOSE | Key MS |

| ID | WBS | Activity | Type | Duration | Start | Finish | Predecessors | Complete | Remaining | Planned start | Planned finish | Total float | Free float | Constraint | Resources | Cost | Actual cost | Department | Responsibility | Phase | Key Milestones |
| --- | --- | --- | --- | --- | --- | --- | --- | --- | --- | --- | --- | --- | --- | --- | --- | --- | --- | --- | --- | --- | --- |
|  | 4 | **Interior Finishes** |  |  | 2012-02-21 | 2013-07-31 |  |  |  |  |  |  |  |  |  |  |  |  |  |  |  |
| EC2000 |  | Unit Finishes Building North - Floor 1 |  | 252d | 2012-02-21 | 2013-02-15 | EC1860, EC1870 FS-5d |  |  |  |  | 296.36d | 0d |  | Finishes & Fit-out Subcontractor [120 h]; Rough Carpenter [120 h]; Finish Carpenter [120 h]; Millwork Subcontractor [120 h]; Drywall Subcontractor [120 h]; Floor and Carpet Layer [120 h]; Painter [40 h]; Plumber [120 h]; HVAC [120 h]; Electrician [120 h] | 65,320 |  | CON | HARIS | FINSH |  |
| EC2030 |  | Unit Finishes Building South - Floor 1 |  | 252d | 2012-02-28 | 2013-02-22 | EC2000 SS+5d |  |  |  |  | 296.36d | 0d |  | Finishes & Fit-out Subcontractor [120 h]; Rough Carpenter [120 h]; Finish Carpenter [120 h]; Millwork Subcontractor [120 h]; Drywall Subcontractor [120 h]; Floor and Carpet Layer [120 h]; Painter [40 h]; Plumber [120 h]; HVAC [120 h]; Electrician [120 h] | 65,320 |  | CON | HARIS | FINSH |  |
| EC2040 |  | Building 1 Elevators Complete |  | 87d | 2012-02-28 | 2012-06-29 | EC2020, EC1750 FF+15d, EC2000 SS |  |  |  |  | 430.36d | 134d |  | Conveying Subcontractor [480 h]; Electrician [480 h] | 84,000 |  | CON | HARIS | FINSH |  |
| EC2070 |  | Unit Finishes Building North - Floor 2 |  | 246d | 2012-03-06 | 2013-02-21 | EC2030 SS+5d |  |  |  |  | 296.36d | 0d |  | Finishes & Fit-out Subcontractor [120 h]; Rough Carpenter [120 h]; Finish Carpenter [120 h]; Millwork Subcontractor [120 h]; Drywall Subcontractor [120 h]; Floor and Carpet Layer [120 h]; Painter [40 h]; Plumber [120 h]; HVAC [120 h]; Electrician [120 h] | 65,320 |  | CON | HARIS | FINSH |  |
| EC2120 |  | Unit Finishes Building South - Floor 2 |  | 246d | 2012-03-13 | 2013-02-28 | EC2070 SS+5d |  |  | 2012-03-14 | 2013-02-28 | 296.36d | 0d |  | Finishes & Fit-out Subcontractor [120 h]; Rough Carpenter [120 h]; Finish Carpenter [120 h]; Millwork Subcontractor [120 h]; Drywall Subcontractor [120 h]; Floor and Carpet Layer [120 h]; Painter [40 h]; Plumber [120 h]; HVAC [120 h]; Electrician [120 h] | 130,640 |  | CON | HARIS | FINSH |  |
| EC2150 |  | Unit Finishes Building North - Floor 3 |  | 246d | 2012-03-20 | 2013-03-07 | EC2040 FF+40d, EC2120 SS+5d |  |  | 2012-03-21 | 2013-03-07 | 296.36d | 0d |  | Finishes & Fit-out Subcontractor [120 h]; Rough Carpenter [120 h]; Finish Carpenter [120 h]; Millwork Subcontractor [120 h]; Drywall Subcontractor [120 h]; Floor and Carpet Layer [120 h]; Painter [40 h]; Plumber [120 h]; HVAC [120 h]; Electrician [120 h] | 130,640 |  | CON | HARIS | FINSH |  |
| EC2170 |  | Unit Finishes Building South - Floor 3 |  | 276d | 2012-03-27 | 2013-03-14 | EC2150 SS+5d |  |  | 2012-03-28 | 2013-04-25 | 296.36d | 0d |  | Finishes & Fit-out Subcontractor [120 h]; Rough Carpenter [120 h]; Finish Carpenter [120 h]; Millwork Subcontractor [120 h]; Drywall Subcontractor [120 h]; Floor and Carpet Layer [120 h]; Painter [40 h]; Plumber [120 h]; HVAC [120 h]; Electrician [120 h] | 130,640 |  | CON | HARIS | FINSH |  |
| EC2200 |  | Unit Finishes Building North - Floor 4 |  | 273d | 2012-04-03 | 2013-03-18 | EC2170 SS+5d |  |  | 2012-04-04 | 2013-04-29 | 296.36d | 0d |  | Finishes & Fit-out Subcontractor [120 h]; Rough Carpenter [120 h]; Finish Carpenter [120 h]; Millwork Subcontractor [120 h]; Drywall Subcontractor [120 h]; Floor and Carpet Layer [120 h]; Painter [40 h]; Plumber [120 h]; HVAC [120 h]; Electrician [120 h] | 130,640 |  | CON | MILLS | FINSH |  |
| EC2210 |  | Unit Finishes Building South - Floor 4 |  | 243d | 2012-04-10 | 2013-03-25 | EC2200 SS+5d |  |  | 2012-04-11 | 2013-03-25 | 296.36d | 0d |  | Finishes & Fit-out Subcontractor [120 h]; Rough Carpenter [120 h]; Finish Carpenter [120 h]; Millwork Subcontractor [120 h]; Drywall Subcontractor [120 h]; Floor and Carpet Layer [120 h]; Painter [40 h]; Plumber [120 h]; HVAC [120 h]; Electrician [120 h] | 130,640 |  | CON | MILLS | FINSH |  |
| EC2410 |  | Final Inspections and Punchlist |  | 115d | 2013-03-25 | 2013-07-31 | EC2210, EC2030, EC2120, EC2170, EC2000, EC2150, EC2070, EC2200 |  |  | 2013-03-26 | 2013-09-05 | 296.36d | 0d |  | Finishes & Fit-out Subcontractor [90 h]; Drywall Subcontractor [90 h]; Floor and Carpet Layer [90 h]; Painter [30 h]; Plumber [90 h]; HVAC [90 h]; Electrician [90 h] | 65,220 |  | CON | MILLS | FINSH |  |
|  | 5 | **Courtyard** |  |  | 2012-12-28 | 2013-06-10 |  |  |  |  |  |  |  |  |  |  |  |  |  |  |  |
| EC2330 |  | Courtyard Walks and Amenities |  | 114d | 2012-12-28 | 2013-06-10 | EC2300 |  |  |  |  | 332.36d | 36d |  | Landscaping Subcontractor [900 h] | 36,000 |  | CON | MILLS | DESGN |  |
|  | 5 | **Garage 1** |  |  | 2011-06-24 | 2013-04-26 |  |  |  |  |  |  |  |  |  |  |  |  |  |  |  |
| EC1420 |  | Start Garage | milestone | 0d | 2011-06-24 | 2011-06-24 |  |  |  | 2011-06-27 | 2011-06-27 | 174.36d | 0d | as late as possible |  |  |  | CON | EVANS | DESGN | Key MS |
| EC1430 |  | Shop Drawings, Review & Approval |  | 90d | 2011-06-24 | 2011-10-27 | EC1420 |  |  | 2011-06-22 | 2011-10-27 | 174.36d | 0d | as late as possible | Concrete Foundation Subcontractor [377.49 h]; Project Managers [390.51 h] | 114,549.15 |  | ENG | EVANS | DESGN |  |
| EC1810 |  | Fab & Delivery |  | 90d | 2011-10-27 | 2012-03-06 | EC1430 |  |  | 2011-10-28 | 2012-03-06 | 174.36d | 0d | as late as possible | Concrete Foundation Subcontractor [283.12 h]; Project Managers [292.88 h] | 85,911.86 |  | ENG | HARIS | PROCR |  |
| EC2090 |  | Erect Precast Structure |  | 120d | 2012-03-06 | 2012-08-23 | EC1810, EC2020 FS+5d |  |  |  |  | 174.36d | 0d |  | Concrete Foundation Subcontractor [440.47 h]; Project Managers [279.53 h] | 58,023.53 |  | CON | HARIS | STRUC |  |
| EC2280 |  | Fire Protection and Lighting |  | 90d | 2012-08-23 | 2013-01-02 | EC2090 |  |  | 2012-08-24 | 2013-01-02 | 362.36d | 0d |  | Concrete Foundation Subcontractor [150 h]; Fire Suppression Subcontractor [150 h]; Electrician [150 h]; Project Managers [150 h] | 99,000 |  | ENG | MILLS | DESGN |  |
| EC2310 |  | Finishes, Barrier Cables & Striping |  | 90d | 2012-12-03 | 2013-04-10 | EC2280 FS-20d |  |  |  |  | 362.36d | 0d |  | Concrete Foundation Subcontractor [480 h]; Project Managers [480 h] | 72,000 |  | CON | MILLS | FINSH |  |
| EC2380 |  | Punchlist Garage |  | 18d | 2013-04-10 | 2013-04-26 | EC2310 |  |  | 2013-04-11 | 2013-05-06 | 362.36d | 0d |  | Concrete Foundation Subcontractor [96 h]; Project Managers [144 h] | 33,600 |  | CON | MILLS | FINSH |  |
| EC2390 |  | Complete Garage 1 | milestone | 0d | 2013-04-26 | 2013-04-26 | EC2400 |  |  | 2013-04-29 | 2013-04-29 | 362.36d |  |  |  |  |  | CON | MILLS | FINSH | Key MS |
| EC2400 |  | Complete Garage | milestone | 0d | 2013-04-26 | 2013-04-26 | EC2380, EC2310 |  |  | 2013-04-29 | 2013-04-29 | 362.36d | 0d |  |  |  |  | CON | MILLS | FINSH | Key MS |
|  | 6 | **Garage 2** |  |  | 2010-09-01 | 2012-09-26 |  |  |  |  |  |  |  |  |  |  |  |  |  |  |  |
| EC1020 |  | Start Garage | milestone | 0d | 2010-09-01 A | 2010-09-01 A |  | 100% |  |  |  |  |  | as late as possible |  |  |  | ENG | FOLEY | DESGN | Key MS |
| EC1030 |  | Shop Drawings, Review and Approval |  | 90d | 2010-09-01 A | 2011-01-12 A | EC1020 | 100% |  | 2010-09-01 | 2011-01-11 |  |  | as late as possible | Concrete Foundation Subcontractor [377.49 h]; Project Managers [390.51 h] | 57,274.58 | 59,661.02 | ENG | FOLEY | DESGN |  |
| EC1180 |  | Fab & Delivery |  | 90d | 2011-01-12 A | 2011-05-10 | EC1030 | 82% | 6.43d | 2011-01-05 | 2011-05-10 | 511.9d | 0d | as late as possible | Concrete Foundation Subcontractor [288 h]; Project Managers [288 h] | 43,200 | 41,250 | ENG | EVANS | PROCR |  |
| EC1280 |  | Erect Precast Structure |  | 120d | 2011-05-10 | 2011-10-28 | EC1180 |  |  |  |  | 511.9d | 0d |  | Concrete Foundation Subcontractor [345.97 h]; Project Managers [374.03 h] | 106,597.4 |  | ENG | FOLEY | STRUC |  |
| EC1590 |  | Fire Protection and Lighting |  | 90d | 2011-10-28 | 2012-03-02 | EC1280 |  |  | 2011-10-28 | 2012-03-07 | 511.9d | 0d |  | Concrete Foundation Subcontractor [148.72 h]; Fire Suppression Subcontractor [148.72 h]; Electrician [148.72 h]; Project Managers [153.85 h] | 98,666.67 |  | ENG | EVANS | DESGN |  |
| EC1680 |  | Finishes and Striping |  | 108d | 2012-02-03 | 2012-07-02 | EC1590 FS-20d |  |  | 2012-02-03 | 2012-07-06 | 511.9d | 0d |  | Concrete Foundation Subcontractor [480 h]; Project Managers [480 h] | 120,000 |  | CON | EVANS | FINSH |  |
| EC2060 |  | Punch List Garage |  | 69d | 2012-07-02 | 2012-09-26 | EC1680 |  |  | 2012-06-19 | 2012-09-26 | 511.9d | 0d |  | Concrete Foundation Subcontractor [120 h]; Project Managers [120 h] | 36,000 |  | CON | HARIS | FINSH |  |
| EC2180 |  | Complete Garage 2 | milestone | 0d | 2012-09-26 | 2012-09-26 | EC2190 |  |  |  |  | 511.9d |  |  |  |  |  | CON | HARIS | FINSH | Key MS |
| EC2190 |  | Complete Garage | milestone | 0d | 2012-09-26 | 2012-09-26 | EC1680, EC2060 |  |  |  |  | 511.9d | 0d |  |  |  |  | CON | HARIS | FINSH | Key MS |

Notes:
- EC2090: Anticipated Problems: jdfpje dkdl;sm / Steps: Masonry; Colar Beam; Roof Trusses; Widows & Doors; Wall Finishes; Roof Membrane & Tiles; Plumbing; Electrical; HVAC; Lockup; FF&E; Tile Flooring

| ID | WBS | Activity | Duration | Start | Finish | Predecessors | Complete | Remaining | Planned start | Planned finish | Total float | Free float | Resources | Cost | Actual cost | Department | Responsibility | Phase |
| --- | --- | --- | --- | --- | --- | --- | --- | --- | --- | --- | --- | --- | --- | --- | --- | --- | --- | --- |
|  | 7 | **Roads, Utilities & Pavers** |  | 2010-09-01 | 2013-05-17 |  |  |  |  |  |  |  |  |  |  |  |  |  |
| EC1000 |  | Curbing | 90d | 2010-09-01 A | 2010-12-30 A |  | 100% |  | 2010-09-01 | 2011-01-11 |  |  | Paving & Roadways Subcontractor [720 h] | 93,600 | 91,520 | ENG | FOLEY | FOUND |
| EC1040 |  | Electric to Building 4 Power Vault | 90d | 2010-09-01 A | 2011-01-10 A |  | 100% |  | 2010-09-01 | 2011-01-11 |  |  | Electrician [720 h] | 68,400 | 71,250 | ENG | FOLEY | DESGN |
| EC1050 |  | Electric to Building 3 Power Vault | 87d | 2010-09-01 A | 2010-12-30 A |  | 100% |  | 2010-09-01 | 2011-01-06 |  |  | Electrician [696 h] | 66,120 | 64,600 | ENG | FOLEY | DESGN |
| EC1100 |  | Storm Drainage Site Work | 90d | 2010-09-01 A | 2010-12-29 A |  | 100% |  | 2010-09-01 | 2011-01-11 |  |  | Utilities Subcontractor [720 h] | 75,600 | 74,550 | CON | FOLEY | ROUGH |
| EC1110 |  | Site Electrical Work & Temp Power | 15d | 2010-09-01 A | 2010-09-21 A | EC1100 SS | 100% |  | 2010-09-01 | 2010-09-23 |  |  | Electrician [120 h] | 11,400 | 11,400 | ENG | FOLEY | ROUGH |
| EC1130 |  | Walkways | 84d | 2010-09-15 A | 2011-02-04 A | EC1000 SS+10d | 100% |  | 2010-09-15 | 2011-01-14 |  |  | Landscaping Subcontractor [672 h] | 26,880 | 28,800 | ENG | NOLAN | ROUGH |
| EC1200 |  | Roadway Pavers | 84d | 2011-01-11 A | 2011-05-06 | EC1130 | 84% | 4.96d |  |  | 805.37d | 0d | Landscaping Subcontractor [528 h] | 21,120 | 21,120 | ENG | HARIS | CLOSE |
| EC1270 |  | Finish Paving, Striping and Signs | 60d | 2011-05-06 | 2011-08-02 | EC1130, EC1200, EC1000 |  |  | 2011-05-09 | 2011-08-02 | 805.37d |  | Paving & Roadways Subcontractor [480 h] | 124,800 |  | ENG | FOLEY | FINSH |
| EC1440 |  | Electric to Building 2 Power Vault | 114d | 2011-09-21 | 2012-03-02 | EC1350, EC1100 |  |  |  |  | 542d | 45d | Electrician [912 h] | 86,640 |  | ENG | EVANS | DESGN |
| EC1750 |  | Electric to Building 1 Power Vault | 87d | 2011-10-25 | 2012-02-28 | EC1640 |  |  | 2011-10-26 | 2012-02-28 | 502.36d | 72d | Electrician [696 h] | 132,240 |  | CON | EVANS | DESGN |
| EC1610 |  | Curbs & Paving | 72d | 2011-10-28 | 2012-02-10 | EC1280 |  |  |  |  | 671.9d |  | Paving & Roadways Subcontractor [576 h] | 149,760 |  | ENG | EVANS | CLOSE |
| EC2250 |  | Fountain/Water Feature | 144d | 2012-08-17 | 2013-03-13 | EC2090 FS-4d |  |  | 2012-08-20 | 2013-03-13 | 394.36d |  | Pool Installation Subcontractor [1152 h] | 241,920 |  | ENG | MILLS | DESGN |
| EC2260 |  | Entry Feature/Sign Wall | 129d | 2012-08-23 | 2013-02-26 | EC2140, EC2090 |  |  | 2012-08-24 | 2013-02-26 | 405.36d |  | FF&E Specialties [1032 h] | 111,456 |  | ENG | MILLS | DESGN |
| EC2290 |  | Curbs & Paving | 90d | 2012-08-23 | 2013-01-02 | EC2090, EC2140 |  |  | 2012-08-24 | 2013-01-02 | 429.36d |  | Paving & Roadways Subcontractor [720 h] | 187,200 |  | CON | MILLS | DESGN |
| EC2340 |  | Curbs & Paving | 99d | 2012-12-28 | 2013-05-17 | EC2320 |  |  |  |  | 347.36d | 51d | Paving & Roadways Subcontractor [792 h] | 102,960 |  | CON | MILLS | DESGN |
|  | 8 | **Landscape & Irrigation** |  | 2011-04-08 | 2014-09-24 |  |  |  |  |  |  |  |  |  |  |  |  |  |
| EC1600 |  | Site Cleanup | 60d | 2011-04-08 A | 2011-07-01 | EC1000 SS+40d, EC1130 FS+5d, EC1000 FS+70d | 20% | 44d | 2011-04-08 | 2011-07-05 | 826.33d |  | Landscaping Subcontractor [480 h] | 19,200 | 4,800 | ENG | HARIS | FINSH |
| EC2360 |  | Landscape & Irrigation | 360d | 2013-05-01 | 2014-09-24 | EC2090, EC2140, EC2270 FS-6d, EC2290 FF+15d |  |  |  |  | 0d |  | Landscaping Subcontractor [227.03 h]; Project Managers [972.97 h] | 57,729.73 |  | ENG | MILLS | ROUGH |

## Activity codes

| Code | Value | Meaning |
| --- | --- | --- |
| Department | CON | Construction Department |
| Department | ENG | Engineering Department |
| Key Milestones | Key MS | Key Milestones |
| Phase | CLOSE | Close-In Phase |
| Phase | DESGN | Design and Engineering Phase |
| Phase | FINSH | Finishes and Closeout Phase |
| Phase | FOUND | Foundation Construction Phase |
| Phase | PROCR | Procurement Phase |
| Phase | ROUGH | Rough-In Phase |
| Phase | STRUC | Structural Phase |
| Responsibility | EVANS | Tim Evans |
| Responsibility | FOLEY | Meg Foley |
| Responsibility | HARIS | Linda Haris |
| Responsibility | MILLS | Tom Mills |
| Responsibility | NOLAN | Joe Nolan |

## Risks

| ID | Risk | Status | Cause | Effect | Description | Response |
| --- | --- | --- | --- | --- | --- | --- |
| R001 | Concrete supply constrained | RS_Active | Many large scale construction projects are competing for demand. | Concrete will be harder to source and prices will be significantly higher than estimated. | Concrete supply is constrained raising prices. | Contract with alternative suppliers |
| R002 | Site access restricted for 2 weeks | RS_Open | Permits not issues in time, issues with permits that are issues, additional restrictions issued on permits. | Access to site restricted to resources required for allowed work. Delays intial start of project, possible delays later is permitting issues are not resolved. | Site access restricted due to permitting issues. | Refile permits to prevent possible issues |
| R012 | Weather delay due to hurricane | RS_Propose |  | Timing of the hurricane will affect the impact it will have on the job site. Worse case, foundations and exterior are not complete and will experience significant delays due to flooding and saturated soils. If the buildings are weather tight, impact will be less, but still possible to have site damage and flooding. Dewatering systems may be required to avoid groundwater swell and foundation impact. Water containment systems are required. |  |  |
| R004 | Poor ground conditions | RS_Open | Geological survey is out of date. | The ground conditions may have problems such as obstructions, running sand and water. | Ground conditions are not as expected and vary from the site survey. |  |
| R005 | Failed electrical inspection | RS_Reject | Recent code changes have gone into effect and enforcement is more stringent. | Delays due to rework and re-inspection. | Electrical may not pass inspection. |  |
| R010 | Interior design changes | RS_Propose |  |  |  |  |
| R007 | Contractor financial instability | RS_Reject |  |  |  |  |
| R009 | Permit delay | RS_Impact | Incomplete and improper paperwork were submitted. | New permits must be filed, possible fines for work that was started without permits. | Job permits are delayed. |  |
| R011 | Window manufacturing delay | RS_Propose | Raw material shortage at window manufacturing facility. | Delayed manufacturing will cause delayed shipment, and delayed window installation. | Window manufacturing and shipment might be delayed. |  |
| R006 | Weather delay due to unusually wet weather | RS_Active |  | Wet weather may slow site prep, foundation work, exterior finishes and landscaping. | Higher than usual amounts of rainfall have already occurred and the wet weather is expected to continue. |  |
| R003 | New roof coating cuts roof install time | RS_Open |  |  |  |  |

## Issues

| Issue | Status | Raised | Activity | Notes |
| --- | --- | --- | --- | --- |
| Unit Finishes Experiencing Productivity Delays | IS_Open | 2011-04-20 | EC1550 | Delay with completing units due to lack of finishing materials (spackle, tape). Scheduled to arrive on site in 1 week. |
| Forecast Overrun | IS_Open | 2011-03-10 | EC1550 | Jeff: / I noticed that the forecast for Autumn Breezes shows a $512,000 cost overrun. I dug into it a little bit and found the problem area is in Building 1 Interior Finishes . I remember you telling me that we were having some problems with that subcontractor's productivity. Is this still the case? We are only 6 months into this project and I don't want this problem to grow. Can you fill me in on what is happening and you and I can work together to resolve it. / Thanks for your help and hard work! / V.P. of Construction |
| Finish Date Variance (days) is -6d on WBS: Harbour Pointe.1.2 | IS_Open | 2007-07-01 |  |  |
| Building 2 Subject To Delay | IS_Open | 2007-04-09 |  | This is an issue connected with productivity delays on Unit / Finishes in Building 1. Building 2 first floor finishes are to be completed by / the same subcontractor that is experience delays now. Recommend official / correspondence to Finshes Subcontractor and consider augmenting crews in / Building 2 to pick-up delay. |
| Finish Date Variance (days) is -21d on WBS: Harbour Pointe.2.4 | IS_Open | 2007-07-01 |  |  |
