# Trial Power BI

Schedule from Primavera P6, 2022-07-02 to 2022-10-22, data date 2022-08-02, costs in EGP, A marks actual dates.

## Calendars

- Farouq 10-HRS: Mon-Sun 07:00-17:00.

## Resources

| Resource | Group | Unit | Rate |
| --- | --- | --- | --- |
| Excavation | material | M3 | 100 |
| PC Concrete | material | M3 | 500 |
| RC Concrete | material | M3 | 700 |
| Insulation | material | m2 | 40 |
| 120 mm Masonry | material | M3 | 150 |
| Plaster | material | m2 | 40 |
| Painting | material | m2 | 60 |

## Schedule

| ID | WBS | Activity | Type | Duration | Start | Finish | Predecessors | Complete | Remaining | Planned start | Planned finish | Total float | Free float | Resources | Cost | Actual cost | Type of work | Villa NO. | Floor | Construction type |
| --- | --- | --- | --- | --- | --- | --- | --- | --- | --- | --- | --- | --- | --- | --- | --- | --- | --- | --- | --- | --- |
|  | MS | **MS** |  |  | 2022-07-04 | 2022-10-22 |  |  |  |  |  |  |  |  |  |  |  |  |  |  |
| PBI.MS1000 |  | Project Commencement | milestone | 0d | 2022-07-04 A | 2022-07-04 A |  | 100% |  |  |  |  |  |  |  |  |  |  |  |  |
| PBI.MS1010 |  | Project Completion | milestone | 0d | 2022-10-22 | 2022-10-22 | PBI.CON.V01.FIN1020 FF, PBI.CON.V02.FIN1020 FF |  |  |  |  | 0d |  |  |  |  |  |  |  |  |
|  | ENG | **Engineering** |  |  | 2022-07-02 | 2022-08-11 |  |  |  |  |  |  |  |  |  |  |  |  |  |  |
| PBI.ENG1000 |  | Substructure Shopdrawings Package |  | 7d | 2022-07-02 A | 2022-07-08 A | PBI.MS1000 SS | 100% |  |  |  |  |  |  |  |  | ENG |  |  |  |
| PBI.ENG1010 |  | GF shopdrawings package |  | 7d | 2022-07-09 A | 2022-08-04 | PBI.ENG1000 | 50% | 3d | 2022-07-09 | 2022-07-15 | 22d | 0d |  |  |  | ENG |  |  |  |
| PBI.ENG1020 |  | 1st Shopdrawings Package |  | 7d | 2022-08-05 | 2022-08-11 | PBI.ENG1010 |  |  |  |  | 29d | 7d |  |  |  | ENG |  |  |  |
|  | CON | **Construction** |  |  | 2022-07-09 | 2022-10-22 |  |  |  |  |  |  |  |  |  |  |  |  |  |  |
|  | V01 | **Villa 01** |  |  | 2022-07-09 | 2022-09-30 |  |  |  |  |  |  |  |  |  |  |  |  |  |  |
|  | SUB | **Sub structure** |  |  | 2022-07-09 | 2022-08-02 |  |  |  |  |  |  |  |  |  |  |  |  |  |  |
| PBI.CON.V01.CIV1000 |  | Excavation |  | 10d | 2022-07-09 A | 2022-07-18 A | PBI.ENG1000 | 100% |  |  |  |  |  | Excavation [100 M3] | 10,000 | 120,000 | CON | V01 | SUB | CIV |
| PBI.CON.V01.CIV1010 |  | PC Concrete |  | 3d | 2022-07-19 A | 2022-07-21 A | PBI.CON.V01.CIV1000 | 100% |  |  |  |  |  | PC Concrete [30 M3] | 15,000 | 20,000 | CON | V01 | SUB | CIV |
| PBI.CON.V01.CIV1020 |  | RC Concrete |  | 7d | 2022-07-22 A | 2022-07-28 A | PBI.CON.V01.CIV1010 | 100% |  |  |  |  |  | RC Concrete [70 M3] | 49,000 | 35,000 | CON | V01 | SUB | CIV |
| PBI.CON.V01.CIV1030 |  | Insulation works |  | 2d | 2022-07-29 A | 2022-07-30 A | PBI.CON.V01.CIV1020 | 100% |  |  |  |  |  | Insulation [100 m2] | 4,000 | 8,000 | CON | V01 | SUB | CIV |
| PBI.CON.V01.CIV1040 |  | Backfilling |  | 3d | 2022-07-31 A | 2022-08-02 A | PBI.CON.V01.CIV1030 | 100% |  |  |  |  |  | Excavation [30 M3] | 3,000 | 4,000 | CON | V01 | SUB | CIV |
|  | SUP | **Super structure** |  |  | 2022-08-03 | 2022-09-01 |  |  |  |  |  |  |  |  |  |  |  |  |  |  |
|  | GF | **Ground Floor** |  |  | 2022-08-03 | 2022-08-18 |  |  |  |  |  |  |  |  |  |  |  |  |  |  |
| PBI.CON.V01.CIV1050 |  | GF Columns |  | 5d | 2022-08-03 A | 2022-08-09 | PBI.CON.V01.CIV1040, PBI.ENG1010 | 50% | 5d | 2022-08-03 | 2022-08-07 | 22d | 0d | RC Concrete [50 M3] | 35,000 |  | CON | V01 | GF | CIV |
| PBI.CON.V01.CIV1060 |  | GF Slab |  | 9d | 2022-08-10 | 2022-08-18 | PBI.CON.V01.CIV1050 |  |  |  |  | 22d | 0d | RC Concrete [90 M3] | 63,000 |  | CON | V01 | GF | CIV |
|  | 1F | **1st Floor** |  |  | 2022-08-19 | 2022-09-01 |  |  |  |  |  |  |  |  |  |  |  |  |  |  |
| PBI.CON.V01.CIV1070 |  | 1F Columns |  | 5d | 2022-08-19 | 2022-08-23 | PBI.CON.V01.CIV1060, PBI.ENG1020 |  |  |  |  | 22d | 0d | RC Concrete [50 M3] | 35,000 |  | CON | V01 | 1F | CIV |
| PBI.CON.V01.CIV1080 |  | 1F Slab |  | 9d | 2022-08-24 | 2022-09-01 | PBI.CON.V01.CIV1070 |  |  |  |  | 22d | 0d | RC Concrete [90 M3] | 63,000 |  | CON | V01 | 1F | CIV |
|  | FIN | **Finishing** |  |  | 2022-09-02 | 2022-09-30 |  |  |  |  |  |  |  |  |  |  |  |  |  |  |
| PBI.CON.V01.FIN1000 |  | Masonry works |  | 7d | 2022-09-02 | 2022-09-08 | PBI.CON.V01.CIV1060, PBI.CON.V01.CIV1080 |  |  |  |  | 22d | 0d | 120 mm Masonry [70 M3] | 10,500 |  | CON | V01 |  | ARCH |
| PBI.CON.V01.FIN1010 |  | Plaster works |  | 12d | 2022-09-09 | 2022-09-20 | PBI.CON.V01.FIN1000 |  |  |  |  | 22d | 0d | Plaster [120 m2] | 4,800 |  | CON | V01 |  | ARCH |
| PBI.CON.V01.FIN1020 |  | Painting works |  | 10d | 2022-09-21 | 2022-09-30 | PBI.CON.V01.FIN1010 |  |  |  |  | 22d |  | Painting [100 m2] | 6,000 |  | CON | V01 |  | ARCH |

| ID | WBS | Activity | Duration | Start | Finish | Predecessors | Total float | Resources | Cost | Villa NO. | Floor | Construction type |
| --- | --- | --- | --- | --- | --- | --- | --- | --- | --- | --- | --- | --- |
|  | V02 | **Villa 02** |  | 2022-08-02 | 2022-10-22 |  |  |  |  |  |  |  |
|  | SUB | **Sub structure** |  | 2022-08-02 | 2022-08-26 |  |  |  |  |  |  |  |
| PBI.CON.V02.CIV1000 |  | Excavation | 10d | 2022-08-02 | 2022-08-11 | PBI.CON.V01.CIV1000 | 0d | Excavation [100 M3] | 10,000 | V02 | SUB | CIV |
| PBI.CON.V02.CIV1010 |  | PC Concrete | 3d | 2022-08-12 | 2022-08-14 | PBI.CON.V02.CIV1000 | 0d | PC Concrete [30 M3] | 15,000 | V02 | SUB | CIV |
| PBI.CON.V02.CIV1020 |  | RC Concrete | 7d | 2022-08-15 | 2022-08-21 | PBI.CON.V02.CIV1010 | 0d | RC Concrete [70 M3] | 49,000 | V02 | SUB | CIV |
| PBI.CON.V02.CIV1030 |  | Insulation works | 2d | 2022-08-22 | 2022-08-23 | PBI.CON.V02.CIV1020 | 0d | Insulation [20 m2] | 800 | V02 | SUB | CIV |
| PBI.CON.V02.CIV1040 |  | Backfilling | 3d | 2022-08-24 | 2022-08-26 | PBI.CON.V02.CIV1030 | 0d | Excavation [30 M3] | 3,000 | V02 | SUB | CIV |
|  | SUP | **Super structure** |  | 2022-08-27 | 2022-09-23 |  |  |  |  |  |  |  |
|  | GF | **Ground Floor** |  | 2022-08-27 | 2022-09-09 |  |  |  |  |  |  |  |
| PBI.CON.V02.CIV1050 |  | GF Columns | 5d | 2022-08-27 | 2022-08-31 | PBI.CON.V02.CIV1040 | 0d | RC Concrete [50 M3] | 35,000 | V02 | GF | CIV |
| PBI.CON.V02.CIV1060 |  | GF Slab | 9d | 2022-09-01 | 2022-09-09 | PBI.CON.V02.CIV1050 | 0d | RC Concrete [90 M3] | 63,000 | V02 | GF | CIV |
|  | 1F | **1st Floor** |  | 2022-09-10 | 2022-09-23 |  |  |  |  |  |  |  |
| PBI.CON.V02.CIV1070 |  | 1F Columns | 5d | 2022-09-10 | 2022-09-14 | PBI.CON.V02.CIV1060 | 0d | RC Concrete [50 M3] | 35,000 | V02 | 1F | CIV |
| PBI.CON.V02.CIV1080 |  | 1F Slab | 9d | 2022-09-15 | 2022-09-23 | PBI.CON.V02.CIV1070 | 0d | RC Concrete [90 M3] | 63,000 | V02 | 1F | CIV |
|  | FIN | **Finishing** |  | 2022-09-24 | 2022-10-22 |  |  |  |  |  |  |  |
| PBI.CON.V02.FIN1000 |  | Masonry works | 7d | 2022-09-24 | 2022-09-30 | PBI.CON.V02.CIV1060, PBI.CON.V02.CIV1080 | 0d | 120 mm Masonry [70 M3] | 10,500 | V02 |  | ARCH |
| PBI.CON.V02.FIN1010 |  | Plaster works | 12d | 2022-10-01 | 2022-10-12 | PBI.CON.V02.FIN1000 | 0d | Plaster [120 m2] | 4,800 | V02 |  | ARCH |
| PBI.CON.V02.FIN1020 |  | Painting works | 10d | 2022-10-13 | 2022-10-22 | PBI.CON.V02.FIN1010 | 0d | Painting [100 m2] | 6,000 | V02 |  | ARCH |

## Activity codes

| Code | Value | Meaning |
| --- | --- | --- |
| Construction type | ARCH | Architecture Works |
| Construction type | CIV | Civil Works |
| Floor | 1F | 1st Floor |
| Floor | GF | Ground Floor |
| Floor | SUB | Sub Structure |
| Type of work | CON | Construction |
| Type of work | ENG | Engineering |
| Villa NO. | V01 | Villa 01 |
| Villa NO. | V02 | Villa 02 |
